# 中联马来园区DCOM平台

Schedule from a web Gantt chart, 2025-12-30 to 2026-01-06.
Saturdays and Sundays are off

## Schedule

| ID | WBS | Task | Type | Duration | Start | Finish | inPeople |
| --- | --- | --- | --- | --- | --- | --- | --- |
| 2 | 1 | DCOM系统合同签订 | fixed start | 6d | 2025-12-30 | 2026-01-06 | 张三 |
| 3 | 2 | 项目立项启动及启动会议 |  | 1d | 2025-12-30 | 2025-12-30 |  |
| 4 | 3 | DCOM系统硬件设备采购 |  | 1d | 2025-12-30 | 2025-12-30 |  |
| 5 | 4 | 硬件设备发货及海运报关 |  | 1d | 2025-12-30 | 2025-12-30 |  |
| 6 | 5 | 马来1#楼一体化系统交付 |  | 1d | 2025-12-30 | 2025-12-30 |  |
| 7 | 6 | 园区网络施工及设备安装 |  | 1d | 2025-12-30 | 2025-12-30 |  |
| 8 | 7 | 园区网络及设备调试 |  | 1d | 2025-12-30 | 2025-12-30 |  |
| 9 | 8 | DCOM平台环境部署 |  | 1d | 2025-12-30 | 2025-12-30 |  |
| 10 | 9 | 机房楼南向数据接入 |  | 1d | 2025-12-30 | 2025-12-30 |  |
| 11 | 10 | DCOM平台数据上线 |  | 1d | 2025-12-30 | 2025-12-30 |  |
| 12 | 11 | DCOM平台北向数据上传 |  | 1d | 2025-12-30 | 2025-12-30 |  |
| 13 | 12 | DCOM平台北向数据验收 |  | 1d | 2025-12-30 | 2025-12-30 |  |
| 14 | 13 | DCOM平台监控功能上线 |  | 1d | 2025-12-30 | 2025-12-30 |  |

Notes:
- 12: 完成北向数据上传的配置及数据推送，数据核对和相关测试
- 13: 北向数据治理及数据验收
